# ПроГрибы

Schedule from MS Project, 2021-10-01 to 2022-08-29, costs in ₽, A marks actual dates.

## Calendars

- Стандартный: Mon-Fri 09:00-13:00, 14:00-18:00; Sat-Sun off. Exceptions (off unless hours are given): 2021-12-10 to 2022-12-30 09:00-13:00, 14:00-17:00 (Короткий день, recurring), 2022-01-03 to 2022-01-07 (Выходные), 2022-02-22 09:00-13:00, 14:00-17:00 (Предпразднечный короткий день), 2022-02-23 (День Защитника отчечества), 2022-03-05 09:00-13:00, 14:00-17:00 (Предпраздничный короткий рабочий день), 2022-03-08 (Международный Женский День), 2022-05-02 to 2022-05-03 (Праздник Весны и Труда), 2022-05-09 to 2022-05-10 (День Защитника Отечества), 2022-06-13 (День России).

## Resources

| Resource | Group | Rate |
| --- | --- | --- |
| Руководитель и администратор проекта | Аппарат управления | 625 |
| Аналитик рисков | Аналитика | 375 |
| Бизнес аналитик | Аналитика | 875 |
| Дизайнер-тестировщик | IT отдел | 312.5 |
| Контроль качества | Отдел контроля качества | 187.5 |
| Подрядчик RedMadRobot Приложение |  | 6000000 |

## Schedule

| ID | WBS | Task | Type | Duration | Start | Finish | Predecessors | Complete | Remaining | Total slack | Constraint | Resources | Work | Actual work | Cost | Actual cost |
| --- | --- | --- | --- | --- | --- | --- | --- | --- | --- | --- | --- | --- | --- | --- | --- | --- |
| 1 | 1 | **ПРОГрибы** |  | 220.25d | 2021-10-01 A | 2022-08-29 |  | 15% | 187.37d | 0d |  |  | 1368h | 464h | 6,646,500 | 184,500 |
| 2 | 1.1 | **Разработка документации проекта** |  | 6d | 2021-10-01 A | 2021-10-08 A |  | 100% |  |  |  |  | 48h | 48h | 9,000 | 9,000 |
| 3 | 1.1.1 | Разработка устава проекта |  | 2d | 2021-10-01 A | 2021-10-04 A |  | 100% |  |  | start no earlier than 2021-10-01 | Контроль качества | 16h | 16h | 3,000 | 3,000 |
| 4 | 1.1.2 | Разработка описания содержания проекта |  | 2d | 2021-10-05 A | 2021-10-06 A | 3 | 100% |  |  |  | Контроль качества | 16h | 16h | 3,000 | 3,000 |
| 5 | 1.1.3 | Разработка плана управления проектом |  | 2d | 2021-10-07 A | 2021-10-08 A | 4 | 100% |  |  |  | Контроль качества | 16h | 16h | 3,000 | 3,000 |
| 6 | 1.1.4 | Описание проекта составлено | milestone | 0d | 2021-10-08 A | 2021-10-08 A | 5 | 100% |  |  |  |  |  |  |  |  |
| 7 | 1.2 | **Заключение договора с заказчиком** |  | 6d | 2021-10-11 A | 2021-10-18 A |  | 100% |  |  |  |  | 48h | 48h | 23,000 | 23,000 |
| 8 | 1.2.1 | Формирование прототипа договора |  | 2d | 2021-10-11 A | 2021-10-12 A | 6 | 100% |  |  | start no earlier than 2021-10-08 | Руководитель и администратор проекта | 16h | 16h | 10,000 | 10,000 |
| 9 | 1.2.2 | Согласование условий договора внутри компании |  | 2d | 2021-10-13 A | 2021-10-14 A | 8 | 100% |  |  |  | Контроль качества | 16h | 16h | 3,000 | 3,000 |
| 10 | 1.2.3 | Согласование условий договора с заказчиком |  | 2d | 2021-10-15 A | 2021-10-18 A | 9 | 100% |  |  |  | Руководитель и администратор проекта | 16h | 16h | 10,000 | 10,000 |
| 11 | 1.2.4 | Подписание договора с заказчиком | milestone | 0d | 2021-10-18 A | 2021-10-18 A | 10 | 100% |  |  |  |  |  |  |  |  |
| 12 | 1.3 | **Анализ рынка** |  | 12d | 2021-10-19 A | 2021-11-03 A |  | 100% |  |  |  |  | 80h | 80h | 58,000 | 58,000 |
| 13 | 1.3.1 | Поиск конкурентов |  | 7d | 2021-10-19 A | 2021-10-27 A | 11 | 100% |  |  |  | Бизнес аналитик | 56h | 56h | 49,000 | 49,000 |
| 14 | 1.3.2 | Составление сравнительной таблицы |  | 3d | 2021-10-28 A | 2021-11-03 A | 13 | 100% |  |  | finish no earlier than 2021-11-02 | Аналитик рисков | 24h | 24h | 9,000 | 9,000 |
| 15 | 1.4 | **Согласование бизнес требований** |  | 8d | 2021-11-04 A | 2021-11-15 A |  | 100% |  |  |  |  | 80h | 80h | 22,000 | 22,000 |
| 16 | 1.4.1 | Подготовка бизнес требований |  | 2d | 2021-11-04 A | 2021-11-05 A | 14 | 100% |  |  |  | Контроль качества | 16h | 16h | 3,000 | 3,000 |
| 17 | 1.4.2 | Подготовка спецификации |  | 2d | 2021-11-08 A | 2021-11-09 A | 16 | 100% |  |  |  | Контроль качества | 16h | 16h | 3,000 | 3,000 |
| 18 | 1.4.3 | Подготовка технического задания |  | 2d | 2021-11-10 A | 2021-11-11 A | 17 | 100% |  |  |  | Контроль качества | 16h | 16h | 3,000 | 3,000 |
| 19 | 1.4.4 | Утверждение основных бизнес требований |  | 2d | 2021-11-12 A | 2021-11-15 A | 18 | 100% |  |  |  | Контроль качества; Руководитель и администратор проекта | 32h | 32h | 13,000 | 13,000 |
| 20 | 1.4.5 | Согласование бизнес требований | milestone | 0d | 2021-11-15 A | 2021-11-15 A | 19 | 100% |  |  |  |  |  |  |  |  |
| 21 | 1.5 | **Архитектура приложения** |  | 12d | 2021-11-16 A | 2021-12-01 A |  | 100% |  |  |  |  | 112h | 112h | 40,000 | 40,000 |
| 22 | 1.5.1 | Разработка архитектуры клиент-сервера |  | 5d | 2021-11-16 A | 2021-11-22 A | 20 | 100% |  |  |  | Дизайнер-тестировщик | 40h | 40h | 12,500 | 12,500 |
| 23 | 1.5.2 | Подготовка архитектуры |  | 5d | 2021-11-23 A | 2021-11-29 A | 22 | 100% |  |  |  | Дизайнер-тестировщик | 40h | 40h | 12,500 | 12,500 |
| 24 | 1.5.3 | Согласование с заказчиком |  | 2d | 2021-11-30 A | 2021-12-01 A | 23 | 100% |  |  |  | Руководитель и администратор проекта; Дизайнер-тестировщик | 32h | 32h | 15,000 | 15,000 |

| ID | WBS | Task | Type | Duration | Start | Finish | Predecessors | Complete | Remaining | Total slack | Free slack | Constraint | Resources | Work | Actual work | Cost | Actual cost |
| --- | --- | --- | --- | --- | --- | --- | --- | --- | --- | --- | --- | --- | --- | --- | --- | --- | --- |
| 25 | 1.6 | **Подгтовка дизайна приложения** |  | 20.62d | 2021-12-02 A | 2021-12-31 |  | 99% | 0d | 21.62d |  |  |  | 96h | 96h | 32,500 | 32,500 |
| 26 | 1.6.1 | Подготовка прототипа |  | 5d | 2021-12-02 A | 2021-12-08 A | 24 | 100% |  |  |  |  | Дизайнер-тестировщик | 40h | 40h | 12,500 | 12,500 |
| 27 | 1.6.2 | Дизайн экранных форм |  | 5d | 2021-12-09 A | 2021-12-16 A | 26 | 100% |  |  |  |  | Дизайнер-тестировщик | 40h | 40h | 12,500 | 12,500 |
| 28 | 1.6.3 | Презентация итоговой версии дизайна заказчику |  | 1d | 2021-12-16 A | 2021-12-17 A | 27 | 100% |  |  |  |  | Дизайнер-тестировщик; Руководитель и администратор проекта | 16h | 16h | 7,500 | 7,500 |
| 29 | 1.6.4 | Договор на реализацию подписан | milestone | 0d | 2021-12-31 | 2021-12-31 | 28 |  |  | 21.62d | 0.88d | start no earlier than 2021-12-31 |  |  |  |  |  |
| 30 | 1.7 | **Разработка приложения** |  | 91.62d | 2022-01-10 | 2022-05-27 | 29 |  |  |  |  |  | Подрядчик RedMadRobot Приложение |  |  | 6,000,000 |  |
| 31 | 1.7.1 | **Серверная часть приложения** |  | 46.62d | 2022-01-10 | 2022-03-18 |  |  |  | 16.12d |  |  |  |  |  |  |  |
| 32 | 1.7.1.1 | Адаптация алгоритма распознавания |  | 28d | 2022-01-10 | 2022-02-17 | 29 |  |  | 20.75d | 0d | start no earlier than 2021-12-28 |  |  |  |  |  |
| 33 | 1.7.1.2 | Функционал системы сообществ |  | 14d | 2022-02-17 | 2022-03-11 | 32 |  |  | 20.75d | 0d |  |  |  |  |  |  |
| 34 | 1.7.1.3 | Функционал вкладки рецептов |  | 7d | 2022-02-17 | 2022-03-01 | 33SS |  |  | 20.75d | 0d |  |  |  |  |  |  |
| 35 | 1.7.1.4 | Функционал личных сообщений |  | 7d | 2022-02-17 | 2022-03-01 | 34SS |  |  | 20.75d | 0d |  |  |  |  |  |  |
| 36 | 1.7.1.5 | Система достижений |  | 7d | 2022-02-17 | 2022-03-01 | 35SS |  |  | 20.75d | 0d |  |  |  |  |  |  |
| 37 | 1.7.1.6 | Совмещение грибных карт |  | 14d | 2022-02-17 | 2022-03-11 | 36SS |  |  | 20.75d | 0d |  |  |  |  |  |  |
| 38 | 1.7.1.7 | Менеджер аккаунтов |  | 14d | 2022-02-17 | 2022-03-11 | 37SS |  |  | 20.75d | 0d |  |  |  |  |  |  |
| 39 | 1.7.1.8 | Реализация биометрического входа |  | 14d | 2022-02-17 | 2022-03-11 | 38SS |  |  | 20.75d | 4.62d |  |  |  |  |  |  |
| 40 | 1.7.1.9 | BackEnd разработан | milestone | 0d | 2022-03-18 | 2022-03-18 | 32FF, 33FF, 34FF, 35FF, 36FF, 37FF, 38FF, 39FF |  |  | 16.12d | 0.88d | start no earlier than 2022-03-18 |  |  |  |  |  |
| 41 | 1.7.2 | **Клиентская часть** |  | 43.25d | 2022-03-21 | 2022-05-26 | 40 |  |  | 0d |  |  |  |  |  |  |  |
| 42 | 1.7.2.1 | Возможность автономной работы алгоритмв |  | 28d | 2022-03-21 | 2022-04-28 | 32 |  |  | 15.25d |  | start no earlier than 2022-03-21 |  |  |  |  |  |
| 43 | 1.7.2.2 | Разработка экранных форм |  | 14d | 2022-05-04 | 2022-05-26 | 42FF, 40 |  |  | 0d |  | start no earlier than 2022-05-02 |  |  |  |  |  |
| 44 | 1.7.2.3 | Реализация функции SOS |  | 14d | 2022-05-04 | 2022-05-26 | 43FF |  |  | 0d |  | start no earlier than 2022-03-18 |  |  |  |  |  |
| 45 | 1.7.2.4 | Справочник |  | 14d | 2022-05-04 | 2022-05-26 | 43FF |  |  | 0d |  |  |  |  |  |  |  |
| 46 | 1.7.2.5 | Модуль навигации |  | 14d | 2022-05-04 | 2022-05-26 | 43FF |  |  | 0d |  |  |  |  |  |  |  |
| 47 | 1.7.2.6 | Приложение разработано | milestone | 0d | 2022-05-26 | 2022-05-26 | 46FF, 44FF, 45FF, 42, 43FF |  |  | 0d |  | start no earlier than 2022-04-08 |  |  |  |  |  |
| 48 | 1.8 | **Тестирование приложения** |  | 56d | 2022-05-26 | 2022-08-16 |  |  |  | 0d |  |  |  | 784h |  | 378,000 |  |
| 49 | 1.8.1 | Модульное тестирование |  | 14d | 2022-05-26 | 2022-06-16 | 47 |  |  | 0d |  | start no earlier than 2022-03-16 | Дизайнер-тестировщик | 112h |  | 35,000 |  |
| 50 | 1.8.2 | Интеграционное тестирование |  | 14d | 2022-06-16 | 2022-07-07 | 49 |  |  | 0d |  |  | Дизайнер-тестировщик | 112h |  | 35,000 |  |
| 51 | 1.8.3 | Нагрузочное тестирование |  | 14d | 2022-07-07 | 2022-07-27 | 50 |  |  | 0d |  |  | Дизайнер-тестировщик | 112h |  | 35,000 |  |
| 52 | 1.8.4 | Тестирование обновлений |  | 14d | 2022-07-27 | 2022-08-16 | 51 |  |  | 0d |  | start no earlier than 2022-05-30 | Дизайнер-тестировщик | 112h |  | 35,000 |  |
| 53 | 1.8.5 | Тестирование интерфейса |  | 14d | 2022-07-07 | 2022-07-27 | 50 |  |  | 8d | 0d |  | Бизнес аналитик | 112h |  | 98,000 |  |
| 54 | 1.8.6 | Тестирование функции SOS |  | 14d | 2022-07-07 | 2022-07-27 | 53SS |  |  | 22d |  |  | Аналитик рисков | 112h |  | 42,000 |  |
| 55 | 1.8.7 | Тестирование функционала экранных форм |  | 14d | 2022-07-27 | 2022-08-16 | 53, 52SF |  |  | 8d |  |  | Бизнес аналитик | 112h |  | 98,000 |  |
| 56 | 1.8.8 | Приложение протестировано | milestone | 0d | 2022-08-16 | 2022-08-16 | 52 |  |  | 0d |  | start no earlier than 2022-05-31 |  |  |  |  |  |

| ID | WBS | Task | Type | Duration | Start | Finish | Predecessors | Total slack | Constraint | Resources | Work | Cost |
| --- | --- | --- | --- | --- | --- | --- | --- | --- | --- | --- | --- | --- |
| 57 | 1.9 | **Релиз приложения** |  | 8d | 2022-08-16 | 2022-08-29 |  | 0d |  |  | 120h | 84,000 |
| 58 | 1.9.1 | Оформить Privacy Policy |  | 3d | 2022-08-16 | 2022-08-19 | 56 | 0d | start no earlier than 2022-05-04 | Контроль качества | 24h | 4,500 |
| 59 | 1.9.2 | Подготовить маркетинговые материалы |  | 3d | 2022-08-16 | 2022-08-19 | 58SS | 0d |  | Бизнес аналитик | 24h | 21,000 |
| 60 | 1.9.3 | Обеспечить сборку наличием сертификата цифровой подписи |  | 1d | 2022-08-16 | 2022-08-17 | 59SS | 0d |  | Дизайнер-тестировщик | 8h | 2,500 |
| 61 | 1.9.4 | Настроить оплату за использование приложения |  | 7d | 2022-08-16 | 2022-08-25 | 60SS | 0d |  | Бизнес аналитик | 56h | 49,000 |
| 62 | 1.9.5 | Отправить сборку в Google Play |  | 1d | 2022-08-26 | 2022-08-29 | 61, 60, 59, 58 | 0d |  | Бизнес аналитик | 8h | 7,000 |
| 63 | 1.9.6 | DeadLine релиза в Google Play | milestone | 0d | 2022-08-29 | 2022-08-29 | 62 | 0d | start no earlier than 2022-07-15 |  |  |  |
